# Bank Renovation (T-GANTT fixture)

| id | name | isPhase | startDate | endDate | duration | status | parentId | trade | assignedTo | critical | predecessors |
| --- | --- | --- | --- | --- | --- | --- | --- | --- | --- | --- | --- |
| p1 | P1 Mobilization & Pre-Construction | True | 2026-11-02 | 2026-11-20 | 0 | in-progress |  |  |  |  |  |
| t01 | Site survey and measured drawings |  | 2026-11-02 | 2026-11-04 | 3 | completed | p1 | Survey | Site Manager | True |  |
| t02 | Building permit lodgement |  | 2026-11-04 | 2026-11-06 | 3 | completed | p1 | Approvals | Project Manager | True | t01 |
| t03 | Site hoarding and access control |  | 2026-11-06 | 2026-11-10 | 5 | completed | p1 | Site Setup | Foreman |  | t02 |
| t04 | Temporary power and water |  | 2026-11-06 | 2026-11-09 | 4 | completed | p1 | Electrical | Electrician |  | t02 |
| t05 | Scaffold and edge protection |  | 2026-11-10 | 2026-11-13 | 4 | completed | p1 | Site Setup | Foreman |  | t03 |
| t06 | Asbestos clearance certificate |  | 2026-11-13 | 2026-11-16 | 4 | completed | p1 | Compliance | Project Manager | True | t03, t04 |
| m0 | Crew mobilised |  | 2026-11-02 | 2026-11-02 | 0 | not-started | p1 | Site Setup | Foreman |  |  |
| g1 | Phase gate: pre-construction complete |  | 2026-11-20 | 2026-11-20 | 0 | not-started | p1 | Commissioning | Project Manager | True | t06, t05 |
| p2 | P2 Demolition & Structural | True | 2026-11-23 | 2026-12-18 | 0 | in-progress |  |  |  |  |  |
| t07 | Strip-out existing partitions |  | 2026-11-23 | 2026-12-02 | 10 | completed | p2 | Demolition | Foreman | True | g1 |
| t08 | Remove vault door assembly |  | 2026-11-23 | 2026-11-27 | 5 | completed | p2 | Demolition | Vault Technician |  | g1, t06 |
| t09 | Structural steel frame install |  | 2026-12-02 | 2026-12-11 | 10 | completed | p2 | Steel | Steel Fixer | True | t07, t08 |
| t10 | Concrete slab repair |  | 2026-12-02 | 2026-12-08 | 7 | completed | p2 | Concrete | Concreter |  | t07 |
| t11 | New roof penetration and flashing |  | 2026-12-08 | 2026-12-15 | 8 | completed | p2 | Roofing | Roofer | True | t09, t10 |
| t12 | Structural engineer inspection |  | 2026-12-11 | 2026-12-15 | 5 | completed | p2 | Compliance | Engineer |  | t09, t10 |
| t13 | Temporary weather seal |  | 2026-12-15 | 2026-12-18 | 4 | completed | p2 | Roofing | Roofer | True | t11 |
| g2 | Phase gate: structure signed off |  | 2026-12-18 | 2026-12-18 | 0 | not-started | p2 | Commissioning | Engineer | True | t12, t13 |
| p3 | P3 Vault & Security Installation | True | 2026-12-21 | 2027-01-15 | 0 | in-progress |  |  |  |  |  |
| t14 | Vault room blockwork |  | 2026-12-21 | 2026-12-30 | 10 | completed | p3 | Blockwork | Bricklayer | True | g2 |
| t15 | Vault door frame set |  | 2026-12-30 | 2027-01-05 | 7 | completed | p3 | Security | Vault Technician | True | t14 |
| t16 | Vault door rehang and align |  | 2027-01-05 | 2027-01-08 | 4 | completed | p3 | Security | Vault Technician | True | t15 |
| t17 | Alarm panel rough-in |  | 2026-12-21 | 2026-12-29 | 9 | completed | p3 | Security | Security Installer |  | g2, t04 |
| t18 | CCTV head-end cabling |  | 2026-12-29 | 2027-01-06 | 9 | completed | p3 | Security | Security Installer |  | t17 |
| t19 | Access control readers |  | 2027-01-06 | 2027-01-12 | 7 | completed | p3 | Security | Security Installer |  | t18, t16 |
| t20 | Vault certification and compliance sign-off |  | 2027-01-12 | 2027-01-15 | 4 | completed | p3 | Compliance | Project Manager | True | t16, t19 |
| g3 | Phase gate: vault certified |  | 2027-01-15 | 2027-01-15 | 0 | not-started | p3 | Commissioning | Project Manager | True | t20, t19 |
| p4 | P4 Interior Fit-Out | True | 2027-01-18 | 2027-02-12 | 0 | in-progress |  |  |  |  |  |
| t21 | Partitions and drywall |  | 2027-01-18 | 2027-01-26 | 9 | in-progress | p4 | Drywall | Carpenter | True | g3 |
| t22 | Ceiling grid and tiles |  | 2027-01-26 | 2027-02-02 | 8 | not-started | p4 | Ceiling | Ceiling Fixer | True | t21, t17 |
| t23 | Floor screed and vinyl |  | 2027-01-26 | 2027-02-03 | 9 | not-started | p4 | Flooring | Floor Layer |  | t21 |
| t24 | Joinery and counter install |  | 2027-02-02 | 2027-02-08 | 7 | not-started | p4 | Joinery | Joiner | True | t22, t23 |
| t25 | Paint and decoration |  | 2027-02-03 | 2027-02-09 | 7 | not-started | p4 | Painting | Painter | True | t23, t24 |
| t26 | HVAC diffusers and commissioning |  | 2027-02-02 | 2027-02-09 | 8 | not-started | p4 | HVAC | HVAC Technician |  | t22, t18 |
| t27 | Fire alarm devices |  | 2027-02-08 | 2027-02-11 | 4 | not-started | p4 | Fire | Fire Technician |  | t24, t26 |
| g4 | Phase gate: fit-out substantial completion |  | 2027-02-12 | 2027-02-12 | 0 | not-started | p4 | Commissioning | Project Manager | True | t25, t27, t26 |
| p5 | P5 Closeout & Handover | True | 2027-02-15 | 2027-02-26 | 0 | not-started |  |  |  |  |  |
| t28 | Snag list walk |  | 2027-02-15 | 2027-02-17 | 3 | not-started | p5 | Commissioning | Site Manager | True | g4 |
| t29 | Deep clean |  | 2027-02-17 | 2027-02-19 | 3 | not-started | p5 | Cleaning | Cleaner | True | t28, t25 |
| t30 | Signage and branding |  | 2027-02-17 | 2027-02-22 | 6 | not-started | p5 | Joinery | Joiner |  | t28, t24 |
| t31 | IT and network cutover |  | 2027-02-19 | 2027-02-23 | 5 | not-started | p5 | IT | IT Technician | True | t29, t19, t26 |
| t32 | Staff training |  | 2027-02-22 | 2027-02-24 | 3 | not-started | p5 | Commissioning | Project Manager | True | t30, t31 |
| t33 | Certificate of occupancy amendment |  | 2027-02-23 | 2027-02-26 | 4 | not-started | p5 | Compliance | Project Manager |  | t31, t27 |
| g5 | Phase gate: handover accepted |  | 2027-02-26 | 2027-02-26 | 0 | not-started | p5 | Commissioning | Project Manager | True | t33, t32 |
| t34 | Warranty register setup |  | 2027-02-24 | 2027-02-26 | 3 | not-started | p99 | Commissioning | Project Manager |  | t33 |
